# Bellomo Week 4 Agile Project Plan

Schedule from MS Project, 2017-09-11 to 2017-12-22, status date 2017-10-16, costs in $, A marks actual dates.

## Calendars

- Standard: Mon-Fri 08:00-12:00, 13:00-17:00; Sat-Sun off. Exceptions (off unless hours are given): 2017-10-09 (Columbus Day), 2017-11-23 to 2017-11-24 (Thanksgiving).

## Resources

| Resource | Rate |
| --- | --- |
| Project Manager | 150 |
| Developer1 | 185 |
| Product Owner | 250 |
| Developer2 | 185 |
| Test Engineer | 140 |

## Schedule

| ID | WBS | Task | Type | Duration | Start | Finish | Predecessors | Complete | Remaining | Baseline start | Baseline finish | Baseline duration | Total slack | Resources | Work | Actual work | Cost | Baseline cost | Actual cost |
| --- | --- | --- | --- | --- | --- | --- | --- | --- | --- | --- | --- | --- | --- | --- | --- | --- | --- | --- | --- |
| 1 | 1 | Project Kickoff |  | 1d | 2017-09-11 A | 2017-09-11 A |  | 100% |  | 2017-09-11 | 2017-09-11 | 1d |  | Project Manager | 8h | 8h | 1,200 | 1,200 | 1,200 |
| 2 | 2 | **Vision Definition** |  | 13d | 2017-09-12 A | 2017-09-28 A |  | 100% |  | 2017-09-12 | 2017-09-28 | 13d |  |  | 112h | 112h | 18,400 | 18,400 | 18,400 |
| 3 | 2.1 | Define Vision |  | 10d | 2017-09-12 A | 2017-09-25 A | 1 | 100% |  | 2017-09-12 | 2017-09-25 | 10d |  | Project Manager | 80h | 80h | 12,000 | 12,000 | 12,000 |
| 4 | 2.2 | Review vision |  | 1d | 2017-09-26 A | 2017-09-26 A | 3 | 100% |  | 2017-09-26 | 2017-09-26 | 1d |  | Product Owner; Project Manager | 16h | 16h | 3,200 | 3,200 | 3,200 |
| 5 | 2.3 | Approve and publish vision |  | 1d | 2017-09-27 A | 2017-09-27 A | 4 | 100% |  | 2017-09-27 | 2017-09-27 | 1d |  | Product Owner | 8h | 8h | 2,000 | 2,000 | 2,000 |
| 6 | 2.4 | Define release schedule |  | 1d | 2017-09-28 A | 2017-09-28 A | 5 | 100% |  | 2017-09-28 | 2017-09-28 | 1d |  | Project Manager | 8h | 8h | 1,200 | 1,200 | 1,200 |
| 7 | 2.5 | Vision definition complete | milestone | 0d | 2017-09-28 A | 2017-09-28 A | 6 | 100% |  | 2017-09-28 | 2017-09-28 |  |  |  |  |  |  |  |  |
| 8 | 3 | **Set up project** |  | 7d | 2017-09-29 A | 2017-10-10 A |  | 100% |  | 2017-09-29 | 2017-10-10 | 7d |  |  | 96h | 96h | 15,800 | 15,800 | 15,800 |
| 9 | 3.1 | Define project processes |  | 2d | 2017-09-29 A | 2017-10-02 A | 7 | 100% |  | 2017-09-29 | 2017-10-02 | 2d |  | Project Manager | 16h | 16h | 2,400 | 2,400 | 2,400 |
| 10 | 3.2 | Set up working environment |  | 4d | 2017-10-03 A | 2017-10-06 A | 9 | 100% |  | 2017-10-03 | 2017-10-06 | 4d |  | Project Manager; Developer1 | 64h | 64h | 10,720 | 10,720 | 10,720 |
| 11 | 3.3 | Determine initial sprint velocity |  | 1d | 2017-10-10 A | 2017-10-10 A | 10 | 100% |  | 2017-10-10 | 2017-10-10 | 1d |  | Project Manager; Developer1 | 16h | 16h | 2,680 | 2,680 | 2,680 |
| 12 | 3.4 | Project setup complete | milestone | 0d | 2017-10-10 A | 2017-10-10 A | 11 | 100% |  | 2017-10-10 | 2017-10-10 |  |  |  |  |  |  |  |  |
| 13 | 4 | **Release 1** |  | 33.5d | 2017-10-11 A | 2017-11-29 |  | 4% | 32.13d | 2017-10-11 | 2017-11-29 | 33.5d | 17.5d |  | 773.6h | 62h | 135,894 | 135,894 | 10,950 |
| 14 | 4.1 | **Release 1 plan** |  | 3.5d | 2017-10-11 A | 2017-10-16 A |  | 100% |  | 2017-10-11 | 2017-10-16 | 3.5d |  |  | 56h | 56h | 9,780 | 9,780 | 9,780 |
| 15 | 4.1.1 | Develop release strategy and vision |  | 1d | 2017-10-11 A | 2017-10-11 A | 12 | 100% |  | 2017-10-11 | 2017-10-11 | 1d |  | Project Manager; Developer1 | 16h | 16h | 2,680 | 2,680 | 2,680 |
| 16 | 4.1.2 | Identify focus for release |  | 0.5d | 2017-10-12 A | 2017-10-12 A | 15 | 100% |  | 2017-10-12 | 2017-10-12 | 0.5d |  | Product Owner; Developer1 | 8h | 8h | 1,740 | 1,740 | 1,740 |
| 17 | 4.1.3 | Develop sprint strategies |  | 2d | 2017-10-12 A | 2017-10-16 A | 16 | 100% |  | 2017-10-12 | 2017-10-16 | 2d |  | Project Manager; Developer1 | 32h | 32h | 5,360 | 5,360 | 5,360 |
| 18 | 4.1.4 | Release plan 1 complete | milestone | 0d | 2017-10-16 A | 2017-10-16 A | 17 | 100% |  | 2017-10-16 | 2017-10-16 |  |  |  |  |  |  |  |  |
| 19 | 4.2 | **Sprint 1.1** |  | 10d | 2017-10-16 A | 2017-10-30 |  | 2% | 9.85d | 2017-10-16 | 2017-10-30 | 10d | 37.5d |  | 207.2h | 6h | 37,558 | 37,558 | 1,170 |
| 20 | 4.2.1 | **Sprint 1.1 plan** |  | 0.5d | 2017-10-16 A | 2017-10-16 A |  | 100% |  | 2017-10-16 | 2017-10-16 | 0.5d |  |  | 6h | 6h | 1,170 | 1,170 | 1,170 |
| 21 | 4.2.1.1 | Select sprint 1.1 features and create sprint vision |  | 0.25d | 2017-10-16 A | 2017-10-16 A | 18 | 100% |  | 2017-10-16 | 2017-10-16 | 0.25d |  | Product Owner | 2h | 2h | 500 | 500 | 500 |
| 22 | 4.2.1.2 | Assign features |  | 0.25d | 2017-10-16 A | 2017-10-16 A | 21 | 100% |  | 2017-10-16 | 2017-10-16 | 0.25d |  | Project Manager; Developer1 | 4h | 4h | 670 | 670 | 670 |
| 23 | 4.2.1.3 | Sprint 1.1 plan complete | milestone | 0d | 2017-10-16 A | 2017-10-16 A | 22 | 100% |  | 2017-10-16 | 2017-10-16 |  |  |  |  |  |  |  |  |
| 24 | 4.2.2 | **Sprint 1.1 execution** |  | 9d | 2017-10-16 | 2017-10-27 | 23 |  |  | 2017-10-16 | 2017-10-27 | 9d | 0d |  | 181.2h |  | 32,748 | 32,748 |  |
| 25 | 4.2.2.1 | Daily scrum |  | 9d | 2017-10-17 | 2017-10-27 |  |  |  | 2017-10-17 | 2017-10-27 | 9d | 0d | Developer1 [15%]; Developer2 [15%]; Test Engineer [15%]; Product Owner [15%]; Project Manager [15%] | 54h |  | 9,828 | 9,828 |  |
| 26 | 4.2.2.2 | Review and maintain sprint plan |  | 9d | 2017-10-17 | 2017-10-27 |  |  |  | 2017-10-17 | 2017-10-27 | 9d | 0d | Project Manager [10%] | 7.2h |  | 1,080 | 1,080 |  |

| ID | WBS | Task | Type | Duration | Start | Finish | Predecessors | Baseline start | Baseline finish | Baseline duration | Total slack | Resources | Work | Cost | Baseline cost |
| --- | --- | --- | --- | --- | --- | --- | --- | --- | --- | --- | --- | --- | --- | --- | --- |
| 27 | 4.2.2.3 | **Sprint 1.1 assigned features** |  | 9d | 2017-10-16 | 2017-10-27 |  | 2017-10-16 | 2017-10-27 | 9d | 38d |  | 120h | 21,840 | 21,840 |
| 28 | 4.2.2.3.1 | Start work on features | milestone | 0d | 2017-10-16 | 2017-10-16 | 23 | 2017-10-16 | 2017-10-16 |  | 47d |  |  |  |  |
| 29 | 4.2.2.3.2 | Create Project Folder Structure |  | 9d | 2017-10-17 | 2017-10-27 |  | 2017-10-17 | 2017-10-27 | 9d | 38d | Developer1 | 72h | 13,320 | 13,320 |
| 30 | 4.2.2.3.3 | Establish GIT source control |  | 1d | 2017-10-17 | 2017-10-17 |  | 2017-10-17 | 2017-10-17 | 1d | 46d | Developer2 | 8h | 1,480 | 1,480 |
| 31 | 4.2.2.3.4 | Initial GIT Push |  | 2d | 2017-10-17 | 2017-10-18 |  | 2017-10-17 | 2017-10-18 | 2d | 45d | Developer2 | 16h | 2,960 | 2,960 |
| 32 | 4.2.2.3.5 | Generate Icons |  | 2d | 2017-10-17 | 2017-10-18 |  | 2017-10-17 | 2017-10-18 | 2d | 45d | Developer2; Test Engineer [50%] | 24h | 4,080 | 4,080 |
| 33 | 4.2.3 | Sprint execution complete | milestone | 0d | 2017-10-27 | 2017-10-27 | 25, 26 | 2017-10-27 | 2017-10-27 |  | 0d |  |  |  |  |
| 34 | 4.2.4 | Sprint 1.1 review |  | 0.25d | 2017-10-30 | 2017-10-30 | 33 | 2017-10-30 | 2017-10-30 | 0.25d | 0d | Developer1; Developer2; Test Engineer; Product Owner; Project Manager | 10h | 1,820 | 1,820 |
| 35 | 4.2.5 | Sprint 1.1 retrospective |  | 0.25d | 2017-10-30 | 2017-10-30 | 34 | 2017-10-30 | 2017-10-30 | 0.25d | 0d | Developer1; Developer2; Test Engineer; Product Owner; Project Manager | 10h | 1,820 | 1,820 |
| 36 | 4.2.6 | Sprint 1.1 complete | milestone | 0d | 2017-10-30 | 2017-10-30 | 35 | 2017-10-30 | 2017-10-30 |  | 0d |  |  |  |  |
| 37 | 4.3 | **Sprint 1.2** |  | 10d | 2017-10-30 | 2017-11-13 |  | 2017-10-30 | 2017-11-13 | 10d | 0d |  | 303.2h | 52,438 | 52,438 |
| 38 | 4.3.1 | **Sprint 1.2 plan** |  | 0.5d | 2017-10-30 | 2017-10-30 |  | 2017-10-30 | 2017-10-30 | 0.5d | 0d |  | 6h | 1,170 | 1,170 |
| 39 | 4.3.1.1 | Select sprint 1.2 features and create sprint vision |  | 0.25d | 2017-10-30 | 2017-10-30 | 36 | 2017-10-30 | 2017-10-30 | 0.25d | 0d | Product Owner | 2h | 500 | 500 |
| 40 | 4.3.1.2 | Assign features |  | 0.25d | 2017-10-30 | 2017-10-30 | 39 | 2017-10-30 | 2017-10-30 | 0.25d | 0d | Project Manager; Developer1 | 4h | 670 | 670 |
| 41 | 4.3.1.3 | Sprint 1.2 plan complete | milestone | 0d | 2017-10-30 | 2017-10-30 | 40 | 2017-10-30 | 2017-10-30 |  | 0d |  |  |  |  |
| 42 | 4.3.2 | **Sprint 1.2 execution** |  | 9d | 2017-10-30 | 2017-11-10 | 41 | 2017-10-30 | 2017-11-10 | 9d | 0d |  | 277.2h | 47,628 | 47,628 |
| 43 | 4.3.2.1 | Daily scrum |  | 9d | 2017-10-31 | 2017-11-10 |  | 2017-10-31 | 2017-11-10 | 9d | 0d | Developer1 [15%]; Developer2 [15%]; Test Engineer [15%]; Product Owner [15%]; Project Manager [15%] | 54h | 9,828 | 9,828 |
| 44 | 4.3.2.2 | Review and maintain sprint plan |  | 9d | 2017-10-31 | 2017-11-10 |  | 2017-10-31 | 2017-11-10 | 9d | 0d | Project Manager [10%] | 7.2h | 1,080 | 1,080 |
| 45 | 4.3.2.3 | **Sprint 1.2 assigned features** |  | 9d | 2017-10-30 | 2017-11-10 |  | 2017-10-30 | 2017-11-10 | 9d | 28d |  | 216h | 36,720 | 36,720 |
| 46 | 4.3.2.3.1 | Start work on features | milestone | 0d | 2017-10-30 | 2017-10-30 | 41 | 2017-10-30 | 2017-10-30 |  | 37d |  |  |  |  |
| 47 | 4.3.2.3.2 | Login Security |  | 9d | 2017-10-31 | 2017-11-10 |  | 2017-10-31 | 2017-11-10 | 9d | 28d | Developer1; Test Engineer [50%] | 108h | 18,360 | 18,360 |
| 48 | 4.3.2.3.3 | 3 tab panel navigation |  | 3d | 2017-10-31 | 2017-11-02 |  | 2017-10-31 | 2017-11-02 | 3d | 34d | Developer2; Test Engineer [50%] | 36h | 6,120 | 6,120 |
| 49 | 4.3.2.3.4 | First panel layout |  | 3d | 2017-10-31 | 2017-11-02 |  | 2017-10-31 | 2017-11-02 | 3d | 34d | Developer2; Test Engineer [50%] | 36h | 6,120 | 6,120 |
| 50 | 4.3.2.3.5 | Log tab layout |  | 3d | 2017-10-31 | 2017-11-02 |  | 2017-10-31 | 2017-11-02 | 3d | 34d | Developer2; Test Engineer [50%] | 36h | 6,120 | 6,120 |
| 51 | 4.3.3 | Sprint execution complete | milestone | 0d | 2017-11-10 | 2017-11-10 | 43, 44 | 2017-11-10 | 2017-11-10 |  | 0d |  |  |  |  |
| 52 | 4.3.4 | Sprint 1.2 review |  | 0.25d | 2017-11-13 | 2017-11-13 | 51 | 2017-11-13 | 2017-11-13 | 0.25d | 0d | Developer1; Developer2; Test Engineer; Product Owner; Project Manager | 10h | 1,820 | 1,820 |
| 53 | 4.3.5 | Sprint 1.2 retrospective |  | 0.25d | 2017-11-13 | 2017-11-13 | 52 | 2017-11-13 | 2017-11-13 | 0.25d | 0d | Developer1; Developer2; Test Engineer; Product Owner; Project Manager | 10h | 1,820 | 1,820 |
| 54 | 4.3.6 | Sprint 1.2 complete | milestone | 0d | 2017-11-13 | 2017-11-13 | 53 | 2017-11-13 | 2017-11-13 |  | 0d |  |  |  |  |

| ID | WBS | Task | Type | Duration | Start | Finish | Predecessors | Baseline start | Baseline finish | Baseline duration | Total slack | Resources | Work | Cost | Baseline cost |
| --- | --- | --- | --- | --- | --- | --- | --- | --- | --- | --- | --- | --- | --- | --- | --- |
| 55 | 4.4 | **Sprint 1.3** |  | 10d | 2017-11-13 | 2017-11-29 |  | 2017-11-13 | 2017-11-29 | 10d | 0d |  | 207.2h | 36,118 | 36,118 |
| 56 | 4.4.1 | **Sprint 1.3 plan** |  | 0.5d | 2017-11-13 | 2017-11-13 |  | 2017-11-13 | 2017-11-13 | 0.5d | 0d |  | 6h | 1,170 | 1,170 |
| 57 | 4.4.1.1 | Select sprint 1.3 features and create sprint vision |  | 0.25d | 2017-11-13 | 2017-11-13 | 54 | 2017-11-13 | 2017-11-13 | 0.25d | 0d | Product Owner | 2h | 500 | 500 |
| 58 | 4.4.1.2 | Assign features |  | 0.25d | 2017-11-13 | 2017-11-13 | 57 | 2017-11-13 | 2017-11-13 | 0.25d | 0d | Project Manager; Developer1 | 4h | 670 | 670 |
| 59 | 4.4.1.3 | Sprint 1.3 plan complete | milestone | 0d | 2017-11-13 | 2017-11-13 | 58 | 2017-11-13 | 2017-11-13 |  | 0d |  |  |  |  |
| 60 | 4.4.2 | **Sprint 1.3 execution** |  | 9d | 2017-11-13 | 2017-11-28 | 59 | 2017-11-13 | 2017-11-28 | 9d | 0d |  | 181.2h | 31,308 | 31,308 |
| 61 | 4.4.2.1 | Daily scrum |  | 9d | 2017-11-14 | 2017-11-28 |  | 2017-11-14 | 2017-11-28 | 9d | 0d | Developer1 [15%]; Developer2 [15%]; Test Engineer [15%]; Product Owner [15%]; Project Manager [15%] | 54h | 9,828 | 9,828 |
| 62 | 4.4.2.2 | Review and maintain sprint plan |  | 9d | 2017-11-14 | 2017-11-28 |  | 2017-11-14 | 2017-11-28 | 9d | 0d | Project Manager [10%] | 7.2h | 1,080 | 1,080 |
| 63 | 4.4.2.3 | **Sprint 1.3 assigned features** |  | 5d | 2017-11-13 | 2017-11-20 |  | 2017-11-13 | 2017-11-20 | 5d | 22d |  | 120h | 20,400 | 20,400 |
| 64 | 4.4.2.3.1 | Start work on features | milestone | 0d | 2017-11-13 | 2017-11-13 | 59 | 2017-11-13 | 2017-11-13 |  | 27d |  |  |  |  |
| 65 | 4.4.2.3.2 | Impulse control log |  | 5d | 2017-11-14 | 2017-11-20 |  | 2017-11-14 | 2017-11-20 | 5d | 22d | Developer1; Developer2; Test Engineer | 120h | 20,400 | 20,400 |
| 66 | 4.4.3 | Sprint execution complete | milestone | 0d | 2017-11-28 | 2017-11-28 | 61, 62 | 2017-11-28 | 2017-11-28 |  | 0d |  |  |  |  |
| 67 | 4.4.4 | Sprint 1.3 review |  | 0.25d | 2017-11-29 | 2017-11-29 | 66 | 2017-11-29 | 2017-11-29 | 0.25d | 0d | Developer1; Developer2; Test Engineer; Product Owner; Project Manager | 10h | 1,820 | 1,820 |
| 68 | 4.4.5 | Sprint 1.3 retrospective |  | 0.25d | 2017-11-29 | 2017-11-29 | 67 | 2017-11-29 | 2017-11-29 | 0.25d | 0d | Developer1; Developer2; Test Engineer; Product Owner; Project Manager | 10h | 1,820 | 1,820 |
| 69 | 4.4.6 | Sprint 1.3 complete | milestone | 0d | 2017-11-29 | 2017-11-29 | 68 | 2017-11-29 | 2017-11-29 |  | 0d |  |  |  |  |
| 70 | 5 | Release 1 build |  | 2d | 2017-11-29 | 2017-12-01 | 69 | 2017-11-29 | 2017-12-01 | 2d | 0d |  |  |  |  |
| 71 | 6 | **Release 2** |  | 13.5d | 2017-12-01 | 2017-12-20 | 70 | 2017-12-01 | 2017-12-20 | 13.5d | 0d |  | 179.2h | 31,618 | 31,618 |
| 72 | 6.1 | **Release 2 plan** |  | 3.5d | 2017-12-01 | 2017-12-06 |  | 2017-12-01 | 2017-12-06 | 3.5d | 0d |  | 56h | 9,780 | 9,780 |
| 73 | 6.1.1 | Develop release strategy and vision |  | 1d | 2017-12-01 | 2017-12-04 |  | 2017-12-01 | 2017-12-04 | 1d | 0d | Project Manager; Developer1 | 16h | 2,680 | 2,680 |
| 74 | 6.1.2 | Identify focus for release |  | 0.5d | 2017-12-04 | 2017-12-04 | 73 | 2017-12-04 | 2017-12-04 | 0.5d | 0d | Product Owner; Developer1 | 8h | 1,740 | 1,740 |
| 75 | 6.1.3 | Develop sprint strategies |  | 2d | 2017-12-05 | 2017-12-06 | 74 | 2017-12-05 | 2017-12-06 | 2d | 0d | Project Manager; Developer1 | 32h | 5,360 | 5,360 |
| 76 | 6.1.4 | Release plan 2 complete | milestone | 0d | 2017-12-06 | 2017-12-06 | 75 | 2017-12-06 | 2017-12-06 |  | 0d |  |  |  |  |
| 77 | 6.2 | **Sprint 2.1** |  | 10d | 2017-12-07 | 2017-12-20 |  | 2017-12-07 | 2017-12-20 | 10d | 0d |  | 123.2h | 21,838 | 21,838 |
| 78 | 6.2.1 | **Sprint 2.1 plan** |  | 0.5d | 2017-12-07 | 2017-12-07 |  | 2017-12-07 | 2017-12-07 | 0.5d | 0d |  | 6h | 1,170 | 1,170 |
| 79 | 6.2.1.1 | Select sprint 2.2 features and create sprint vision |  | 0.25d | 2017-12-07 | 2017-12-07 | 76 | 2017-12-07 | 2017-12-07 | 0.25d | 0d | Product Owner | 2h | 500 | 500 |
| 80 | 6.2.1.2 | Assign features |  | 0.25d | 2017-12-07 | 2017-12-07 | 79 | 2017-12-07 | 2017-12-07 | 0.25d | 0d | Project Manager; Developer1 | 4h | 670 | 670 |
| 81 | 6.2.1.3 | Sprint 2.2 plan complete | milestone | 0d | 2017-12-07 | 2017-12-07 | 80 | 2017-12-07 | 2017-12-07 |  | 0d |  |  |  |  |

Notes:
- 70: Link to completion milestone for last sprint in release

| ID | WBS | Task | Type | Duration | Start | Finish | Predecessors | Baseline start | Baseline finish | Baseline duration | Total slack | Resources | Work | Cost | Baseline cost |
| --- | --- | --- | --- | --- | --- | --- | --- | --- | --- | --- | --- | --- | --- | --- | --- |
| 82 | 6.2.2 | **Sprint 2.1 execution** |  | 9d | 2017-12-07 | 2017-12-20 | 81 | 2017-12-07 | 2017-12-20 | 9d | 0d |  | 97.2h | 17,028 | 17,028 |
| 83 | 6.2.2.1 | Daily scrum |  | 9d | 2017-12-07 | 2017-12-20 |  | 2017-12-07 | 2017-12-20 | 9d | 0d | Developer1 [15%]; Developer2 [15%]; Test Engineer [15%]; Product Owner [15%]; Project Manager [15%] | 54h | 9,828 | 9,828 |
| 84 | 6.2.2.2 | Review and maintain sprint plan |  | 9d | 2017-12-07 | 2017-12-20 |  | 2017-12-07 | 2017-12-20 | 9d | 0d | Project Manager [10%] | 7.2h | 1,080 | 1,080 |
| 85 | 6.2.2.3 | **Sprint 2.1 assigned features** |  | 1d | 2017-12-07 | 2017-12-08 |  | 2017-12-07 | 2017-12-08 | 1d | 10.5d |  | 36h | 6,120 | 6,120 |
| 86 | 6.2.2.3.1 | Start work on features | milestone | 0d | 2017-12-07 | 2017-12-07 | 81 | 2017-12-07 | 2017-12-07 |  | 11.5d |  |  |  |  |
| 87 | 6.2.2.3.2 | Click to call hotline |  | 1d | 2017-12-07 | 2017-12-08 |  | 2017-12-07 | 2017-12-08 | 1d | 10.5d | Developer1; Test Engineer [50%] | 12h | 2,040 | 2,040 |
| 88 | 6.2.2.3.3 | Log Sharing |  | 1d | 2017-12-07 | 2017-12-08 |  | 2017-12-07 | 2017-12-08 | 1d | 10.5d | Developer2; Test Engineer [50%] | 12h | 2,040 | 2,040 |
| 89 | 6.2.2.3.4 | Password Recovery |  | 1d | 2017-12-07 | 2017-12-08 |  | 2017-12-07 | 2017-12-08 | 1d | 10.5d | Developer1; Test Engineer [50%] | 12h | 2,040 | 2,040 |
| 90 | 6.2.3 | Sprint execution complete | milestone | 0d | 2017-12-20 | 2017-12-20 | 83, 84 | 2017-12-20 | 2017-12-20 |  | 0d |  |  |  |  |
| 91 | 6.2.4 | Sprint 2.1 review |  | 0.25d | 2017-12-20 | 2017-12-20 | 90 | 2017-12-20 | 2017-12-20 | 0.25d | 0d | Developer1; Developer2; Test Engineer; Product Owner; Project Manager | 10h | 1,820 | 1,820 |
| 92 | 6.2.5 | Sprint 2.1 retrospective |  | 0.25d | 2017-12-20 | 2017-12-20 | 91 | 2017-12-20 | 2017-12-20 | 0.25d | 0d | Developer1; Developer2; Test Engineer; Product Owner; Project Manager | 10h | 1,820 | 1,820 |
| 93 | 6.2.6 | Sprint 2.1 complete | milestone | 0d | 2017-12-20 | 2017-12-20 | 92 | 2017-12-20 | 2017-12-20 |  | 0d |  |  |  |  |
| 94 | 7 | Release 2 build |  | 2d | 2017-12-21 | 2017-12-22 | 93 | 2017-12-21 | 2017-12-22 | 2d | 0d |  |  |  |  |
| 95 | 8 | Product Build Complete | milestone | 0d | 2017-12-22 | 2017-12-22 | 94 | 2017-12-22 | 2017-12-22 |  | 0d |  |  |  |  |
| 96 | 9 | Product backlog |  | 1d | 2017-09-11 | 2017-09-11 |  | 2017-09-11 | 2017-09-11 | 1d | 71d |  |  |  |  |

Notes:
- 94: Link to completion milestone for last sprint in release
