# Bellomo Week 4 Waterfall Project Plan

Schedule from MS Project, 2017-09-11 to 2018-01-03, status date 2017-10-16, costs in $, A marks actual dates.

## Calendars

- Standard: Mon-Fri 08:00-12:00, 13:00-17:00; Sat-Sun off. Exceptions (off unless hours are given): 2017-10-09 (Columbus Day), 2017-11-23 to 2017-11-24 (Thanksgiving), 2017-12-25 to 2018-01-01 (Holiday Week 2017).

## Resources

| Resource | Rate |
| --- | --- |
| Project Manager | 150 |
| Developer1 | 185 |
| Product Owner | 250 |
| Developer2 | 185 |
| Test Engineer | 140 |

## Schedule

| ID | WBS | Task | Type | Duration | Start | Finish | Predecessors | Complete | Remaining | Baseline start | Baseline finish | Baseline duration | Total slack | Resources | Work | Actual work | Cost | Baseline cost | Actual cost |
| --- | --- | --- | --- | --- | --- | --- | --- | --- | --- | --- | --- | --- | --- | --- | --- | --- | --- | --- | --- |
| 1 | 1 | **Initiation stage** |  | 3d | 2017-09-11 A | 2017-09-13 A |  | 100% |  | 2017-09-11 | 2017-09-13 | 3d |  |  |  |  |  |  |  |
| 2 | 1.1 | Create project Charter |  | 2d | 2017-09-11 A | 2017-09-12 A |  | 100% |  | 2017-09-11 | 2017-09-12 | 2d |  |  |  |  |  |  |  |
| 3 | 1.2 | obtain charter signoff |  | 1d | 2017-09-13 A | 2017-09-13 A | 2 | 100% |  | 2017-09-13 | 2017-09-13 | 1d |  |  |  |  |  |  |  |
| 4 | 1.3 | Initiation phase completed | milestone | 0d | 2017-09-13 A | 2017-09-13 A | 3 | 100% |  | 2017-09-13 | 2017-09-13 |  |  |  |  |  |  |  |  |
| 5 | 2 | **Design Stage** |  | 19d | 2017-09-14 A | 2017-10-11 A |  | 100% |  | 2017-09-14 | 2017-10-11 | 19d |  |  | 416h | 416h | 74,680 | 74,680 | 74,680 |
| 6 | 2.1 | Design Workshop |  | 5d | 2017-09-14 A | 2017-09-20 A | 4 | 100% |  | 2017-09-14 | 2017-09-20 | 5d |  | Developer1; Product Owner; Project Manager | 120h | 120h | 23,400 | 23,400 | 23,400 |
| 7 | 2.2 | Design Document Draft |  | 10d | 2017-09-21 A | 2017-10-04 A | 6 | 100% |  | 2017-09-21 | 2017-10-04 | 10d |  | Developer1; Project Manager | 240h | 240h | 40,200 | 40,200 | 40,200 |
| 8 | 2.3 | Design Document Review |  | 1d | 2017-10-05 A | 2017-10-05 A | 7 | 100% |  | 2017-10-05 | 2017-10-05 | 1d |  | Product Owner; Project Manager | 16h | 16h | 3,200 | 3,200 | 3,200 |
| 9 | 2.4 | Design Document Updates |  | 1d | 2017-10-06 A | 2017-10-06 A | 8 | 100% |  | 2017-10-06 | 2017-10-06 | 1d |  | Developer1; Project Manager | 16h | 16h | 2,680 | 2,680 | 2,680 |
| 10 | 2.5 | Design Document Update Review |  | 1d | 2017-10-10 A | 2017-10-10 A | 9 | 100% |  | 2017-10-10 | 2017-10-10 | 1d |  | Product Owner; Project Manager | 16h | 16h | 3,200 | 3,200 | 3,200 |
| 11 | 2.6 | Design Document Signoff |  | 1d | 2017-10-11 A | 2017-10-11 A | 10 | 100% |  | 2017-10-11 | 2017-10-11 | 1d |  | Product Owner | 8h | 8h | 2,000 | 2,000 | 2,000 |
| 12 | 2.7 | Design Phase Complete | milestone | 0d | 2017-10-11 A | 2017-10-11 A | 11 | 100% |  | 2017-10-11 | 2017-10-11 |  |  |  |  |  |  |  |  |
| 13 | 3 | **Development Stage** |  | 29.5d | 2017-10-12 A | 2017-11-22 |  | 16% | 24.7d | 2017-10-12 | 2017-11-22 | 29.5d | 22d |  | 332h | 115.2h | 61,420 | 61,420 | 21,312 |
| 14 | 3.1 | Create Project Folder Structure |  | 6d | 2017-10-12 A | 2017-10-19 | 12 | 80% | 1.2d | 2017-10-12 | 2017-10-19 | 6d | 0d | Developer1 | 144h | 115.2h | 26,640 | 26,640 | 21,312 |
| 15 | 3.2 | Establish GIT source control |  | 1d | 2017-10-20 | 2017-10-20 | 14 |  |  | 2017-10-20 | 2017-10-20 | 1d | 0d | Developer1 | 8h |  | 1,480 | 1,480 |  |
| 16 | 3.3 | Initial GIT Push |  | 2d | 2017-10-23 | 2017-10-24 | 15 |  |  | 2017-10-23 | 2017-10-24 | 2d | 0d | Developer1 | 16h |  | 2,960 | 2,960 |  |
| 17 | 3.4 | Click to call hotline |  | 1d | 2017-10-25 | 2017-10-25 | 16 |  |  | 2017-10-25 | 2017-10-25 | 1d | 0d | Developer1 | 8h |  | 1,480 | 1,480 |  |
| 18 | 3.5 | Password Recovery |  | 1d | 2017-10-26 | 2017-10-26 | 17 |  |  | 2017-10-26 | 2017-10-26 | 1d | 0d | Developer1 | 8h |  | 1,480 | 1,480 |  |
| 19 | 3.6 | Impulse control log |  | 5d | 2017-10-27 | 2017-11-02 | 18 |  |  | 2017-10-27 | 2017-11-02 | 5d | 0d | Developer1 | 40h |  | 7,400 | 7,400 |  |
| 20 | 3.7 | 3 tab panel navigation |  | 4.5d | 2017-11-03 | 2017-11-09 | 19 |  |  | 2017-11-03 | 2017-11-09 | 4.5d | 0d | Developer2 | 36h |  | 6,660 | 6,660 |  |
| 21 | 3.8 | First panel layout |  | 3d | 2017-11-09 | 2017-11-14 | 20 |  |  | 2017-11-09 | 2017-11-14 | 3d | 0d | Developer2 | 24h |  | 4,440 | 4,440 |  |
| 22 | 3.9 | Generate Icons |  | 2d | 2017-11-14 | 2017-11-16 | 21 |  |  | 2017-11-14 | 2017-11-16 | 2d | 0d | Developer2 | 16h |  | 2,960 | 2,960 |  |
| 23 | 3.10 | Log tab layout |  | 3d | 2017-11-16 | 2017-11-21 | 22 |  |  | 2017-11-16 | 2017-11-21 | 3d | 0d | Developer2 | 24h |  | 4,440 | 4,440 |  |
| 24 | 3.11 | Log Sharing |  | 1d | 2017-11-21 | 2017-11-22 | 23 |  |  | 2017-11-21 | 2017-11-22 | 1d | 0d | Developer2 | 8h |  | 1,480 | 1,480 |  |
| 25 | 3.12 | Development Stage Complete | milestone | 0d | 2017-11-22 | 2017-11-22 | 24 |  |  |  |  |  | 22d |  |  |  |  |  |  |

| ID | WBS | Task | Type | Duration | Start | Finish | Predecessors | Baseline start | Baseline finish | Baseline duration | Total slack | Resources | Work | Cost | Baseline cost |
| --- | --- | --- | --- | --- | --- | --- | --- | --- | --- | --- | --- | --- | --- | --- | --- |
| 26 | 4 | **Testing Stage** |  | 18d | 2017-11-22 | 2017-12-20 |  | 2017-11-22 | 2017-12-20 | 18d | 0d |  | 264h | 40,560 | 40,560 |
| 27 | 4.1 | Feature testing |  | 10d | 2017-11-22 | 2017-12-08 | 24 | 2017-11-22 | 2017-12-08 | 10d | 0d | Test Engineer | 160h | 22,400 | 22,400 |
| 28 | 4.2 | Testing Feedback Round 1 | milestone | 0d | 2017-12-08 | 2017-12-08 | 27 | 2017-12-08 | 2017-12-08 |  | 0d |  |  |  |  |
| 29 | 4.3 | Failed Test Fixes |  | 5d | 2017-12-08 | 2017-12-15 | 28 | 2017-12-08 | 2017-12-15 | 5d | 0d | Developer1; Developer2 | 80h | 14,800 | 14,800 |
| 30 | 4.4 | Retest fixes |  | 3d | 2017-12-15 | 2017-12-20 | 29 | 2017-12-15 | 2017-12-20 | 3d | 0d | Test Engineer | 24h | 3,360 | 3,360 |
| 31 | 4.5 | Testing Stage Complete | milestone | 0d | 2017-12-20 | 2017-12-20 | 30 | 2017-12-20 | 2017-12-20 |  | 0d |  |  |  |  |
| 32 | 5 | **User Acceptance Testing** |  | 3d | 2017-12-20 | 2018-01-02 |  | 2017-12-20 | 2018-01-02 | 3d | 0d |  | 48h | 9,600 | 9,600 |
| 33 | 5.1 | User Acceptance Testing Sessions |  | 3d | 2017-12-20 | 2018-01-02 | 31 | 2017-12-20 | 2018-01-02 | 3d | 0d | Product Owner; Project Manager | 48h | 9,600 | 9,600 |
| 34 | 5.2 | User Acceptance Testing Complete | milestone | 0d | 2018-01-02 | 2018-01-02 | 33 | 2018-01-02 | 2018-01-02 |  | 0d |  |  |  |  |
| 35 | 6 | **Go Live** |  | 1d | 2018-01-02 | 2018-01-03 |  | 2018-01-02 | 2018-01-03 | 1d | 0d |  |  |  |  |
| 36 | 6.1 | Release to Production |  | 1d | 2018-01-02 | 2018-01-03 | 34 | 2018-01-02 | 2018-01-03 | 1d | 0d |  |  |  |  |
| 37 | 6.2 | Go Live | milestone | 0d | 2018-01-03 | 2018-01-03 | 36 | 2018-01-03 | 2018-01-03 |  | 0d |  |  |  |  |
| 38 | 7 | **Project Closure** |  | 0d | 2018-01-03 | 2018-01-03 |  | 2018-01-03 | 2018-01-03 |  | 0d |  |  |  |  |
| 39 | 7.1 | Project Complete | milestone | 0d | 2018-01-03 | 2018-01-03 | 37 | 2018-01-03 | 2018-01-03 |  | 0d | Project Manager |  |  |  |
